How a schedule from Planner changed from version to version. A marks actual dates.

## Version 1 (saved 2024-11-17)

Note of the change: workdays calculation

| ID | WBS | Task | Duration | Start | Finish | Predecessors |
| --- | --- | --- | --- | --- | --- | --- |
| 1 |  | KO | 0d | 2025-04-01 | 2025-04-01 |  |
| 2 | 2 | **Analysis and Design** | 80d | 2025-04-01 | 2025-07-21 |  |
| 3 |  | Review of current FM (TRL9) | 20d | 2025-04-01 | 2025-04-28 |  |
| 4 |  | Mechanical and thermal redesign | 30d | 2025-04-29 | 2025-06-09 | 3 |
| 5 |  | Electrical redesign | 30d | 2025-04-29 | 2025-06-09 | 3 |
| 6 |  | Wearing design | 30d | 2025-06-10 | 2025-07-21 | 4, 3 |
| 7 |  | SSR (System Requirement Review) | 0d | 2025-06-09 | 2025-06-09 | 5 |
| 8 | 3 | **Manufacturing and Testing EM** | 90d | 2025-06-10 | 2025-10-13 |  |
| 9 |  | EM manufacturing (TRL7) | 30d | 2025-06-10 | 2025-07-21 | 7 |
| 10 |  | Battery module EQM manufacturing (TRL6) | 30d | 2025-06-10 | 2025-07-21 | 7 |
| 11 |  | FW development | 60d | 2025-07-22 | 2025-10-13 | 10 |
| 12 |  | Testing | 30d | 2025-07-22 | 2025-09-01 | 9, 10 |
| 13 |  | MRR (Manufacturing Readiness Reviev) | 0d | 2025-09-01 | 2025-09-01 | 12 |
| 14 | 4 | **Manufacturing and Testing PFM** | 195d | 2025-07-22 | 2026-04-20 |  |
| 15 |  | PFM manufacturing | 30d | 2025-09-02 | 2025-10-13 | 17, 13 |
| 16 |  | GM/ TrM | 0d | 2025-10-13 | 2025-10-13 | 17, 15 |
| 17 |  | Wearing accessories manufacturing | 30d | 2025-07-22 | 2025-09-01 | 6 |
| 18 |  | Transport package | 14d | 2025-10-14 | 2025-10-31 | 15 |
| 19 |  | Calibration | 30d | 2025-11-25 | 2026-01-05 | 35, 15 |
| 20 |  | Testing | 75d | 2026-01-06 | 2026-04-20 | 19 |
| 21 |  | Qualification documentation | 60d | 2025-10-14 | 2026-01-05 | 16 |
| 22 |  | QAR (Qualification and Acceptance Review) | 0d | 2026-04-20 | 2026-04-20 | 21, 20 |
| 23 |  | FM | 0d | 2026-04-20 | 2026-04-20 | 22 |
| 24 | 5 | **Dosimetry Display Unit (DDU) demonstrator** | 260d | 2025-04-01 | 2026-03-30 |  |
| 25 |  | Review of current prototype (TRL6) | 20d | 2025-04-01 | 2025-04-28 |  |
| 26 |  | DDU electrical redesign & Dosimeter extra PCB design | 30d | 2025-09-02 | 2025-10-13 | 13, 25 |
| 27 |  | DDU mechanical redesign | 30d | 2025-09-02 | 2025-10-13 | 13, 25 |
| 28 |  | DDU FW redesign | 60d | 2025-10-14 | 2026-01-05 | 26, 25 |
| 29 |  | DDU EQM Manufacturing | 30d | 2025-10-14 | 2025-11-24 | 27 |
| 30 |  | DDU EQM | 0d | 2026-01-05 | 2026-01-05 | 28, 29 |
| 31 |  | DDU Testing | 60d | 2026-01-06 | 2026-03-30 | 30, 29 |
| 32 |  | DDU FM | 0d | 2026-03-30 | 2026-03-30 | 31 |
| 33 | 6 | **Operations Preparation** | 265d | 2025-04-29 | 2026-05-04 |  |
| 34 |  | Detector response simulation | 60d | 2025-04-29 | 2025-07-21 | 3 |
| 35 |  | Development of Hp calculation method | 60d | 2025-09-02 | 2025-11-24 | 44, 13 |
| 36 |  | Hp calculation method verification | 60d | 2026-01-06 | 2026-03-30 | 19 |
| 37 |  | Operating manual & Worksheets | 40d | 2026-01-06 | 2026-03-02 | 30, 15 |
| 38 |  | Support of crew training | 28d | 2026-03-03 | 2026-04-09 | 37 |
| 39 |  | Payload integration | 75d | 2026-01-06 | 2026-04-20 | 30, 16 |
| 40 |  | Support to real time works | 10d | 2026-04-21 | 2026-05-04 | 38, 23 |
| 41 |  | CoFR (Certificate of Flight Readiness) | 0d | 2026-03-02 | 2026-03-02 | 37 |
| 42 | 7 | **Outreach** | 281.11d | 2025-04-01 | 2026-04-29 |  |
| 43 |  | Outreach planning | 30d | 2025-04-01 | 2025-05-12 |  |
| 44 |  | Studens lectures/experiments | 30d | 2025-07-22 | 2025-09-01 | 34 |
| 45 |  | Outreach activities | 221.11d | 2025-06-24 | 2026-04-29 | 48 |
| 46 |  | Colaboration with ESERO | 220d | 2025-06-24 | 2026-04-27 | 48 |
| 47 |  | Support of PR materials creation | 60d | 2026-01-06 | 2026-03-30 | 19 |
| 48 |  | Web presentation | 30d | 2025-05-13 | 2025-06-23 | 43 |
| 49 | 8 | **Project management** | 280d | 2025-04-01 | 2026-04-27 |  |
| 50 |  | Management | 280d | 2025-04-01 | 2026-04-27 |  |

## Version 2 (saved 2024-11-17)

Note of the change: plan corrections

Last finish 2026-05-04 → 2026-04-29 (-5d).

Added:

| ID | Task | Duration | Start | Finish | Predecessors | Resources |
| --- | --- | --- | --- | --- | --- | --- |
| 19 | Transport package manufacturing | 30d | 2025-11-03 | 2025-12-12 | 18 | UST |

Changed:

| ID | Task | Start | Finish | Duration | Predecessors | Other |
| --- | --- | --- | --- | --- | --- | --- |
| 14 | **Manufacturing and Testing PFM** |  | 2026-04-20 → 2026-03-30 (-21d) | 195d → 180d |  |  |
| 18 | Transport package design |  |  |  |  | was named Transport package |
| 21 | Testing |  | 2026-04-20 → 2026-03-26 (-25d) | 75d → 57.11d |  |  |
| 23 | QAR (Qualification and Acceptance Review) | 2026-04-20 → 2026-03-30 (-21d) | 2026-04-20 → 2026-03-30 (-21d) |  | 22, 21 → 33, 22, 21 |  |
| 24 | FM | 2026-04-20 → 2026-03-30 (-21d) | 2026-04-20 → 2026-03-30 (-21d) |  |  |  |
| 27 | DDU electrical redesign & Dosimeter extra PCB design |  |  |  | 13, 26 → 12, 26 |  |
| 28 | DDU mechanical redesign |  |  |  | 13, 26 → 12 |  |
| 34 | **Operations Preparation** |  | 2026-05-04 → 2026-04-23 (-11d) | 265d → 258d |  |  |
| 36 | Development of Hp calculation method |  |  |  | 45, 13 → 45 |  |
| 37 | Hp calculation method verification |  | 2026-03-30 → 2026-03-16 (-14d) | 60d → 50d |  | resources Scientific Team [50%] → Scientific Team [80%] |
| 40 | Payload integration |  | 2026-04-20 → 2026-03-16 (-35d) | 75d → 50d |  |  |
| 41 | Support to real time works | 2026-04-21 → 2026-04-10 (-11d) | 2026-05-04 → 2026-04-23 (-11d) |  | 39, 24 → 42, 39, 24 |  |
| 42 | CoFR (Certificate of Flight Readiness) | 2026-03-02 → 2026-03-30 (+28d) | 2026-03-02 → 2026-03-30 (+28d) |  | 38 → 33, 24, 40, 38 |  |
| 48 | Support of PR materials creation |  | 2026-03-30 → 2026-03-16 (-14d) | 60d → 50d |  | resources Scientific Team [50%] → Scientific Team [20%] |

## Version 3 (saved 2024-11-18)

Note of the change: calculation of WPs

Last finish stays 2026-04-29.

Changed:

| ID | Task | Other |
| --- | --- | --- |
| 7 | SRR (System Requirement Review) | was named SSR (System Requirement Review) |

## Version 4 (saved 2024-11-25)

Note of the change: some changes

Last finish stays 2026-04-29.

Changed:

| ID | Task | Other |
| --- | --- | --- |
| 9 | EM manufacturing (TRL7) | resources UST → Manufacturing |
| 10 | Battery module EQM manufacturing (TRL6) | resources UST → Manufacturing |
| 15 | PFM manufacturing | resources UST → Manufacturing |
| 17 | Wearing accessories manufacturing | resources UST → Manufacturing |
| 19 | Transport package manufacturing | resources UST → Manufacturing |
| 30 | DDU EQM Manufacturing | resources UST → Manufacturing |
